# 豆柴

Schedule from MS Project, 2023-09-01 to 2024-01-18, 7 hours a day, costs in ¥, A marks actual dates.

## Calendars

- 6Day: Mon-Fri 09:00-12:00, 14:00-18:00; Sat-Sun off. Exceptions (off unless hours are given): 2023-10-01 to 2023-10-07 (国庆), 2024-01-01 to 2024-01-03 (元旦).

## Resources

| Resource | Rate |
| --- | --- |
| 孙潇桐 | 100 |
| 俞家宝 | 70 |
| 施宇杰 | 70 |
| 雷璟锟 | 70 |
| 陈罗星 | 70 |
| 叶嘉宁 | 100 |
| 电脑 | 10000 |
| 云服务器 | 50000 |

## Schedule

| ID | WBS | Task | Type | Duration | Start | Finish | Predecessors | Complete | Remaining | Baseline start | Baseline finish | Baseline duration | Total slack | Free slack | Constraint | Resources | Work | Actual work | Cost | Baseline cost | Actual cost |
| --- | --- | --- | --- | --- | --- | --- | --- | --- | --- | --- | --- | --- | --- | --- | --- | --- | --- | --- | --- | --- | --- |
| 1 | N-1 | **Master宠物网店** |  | 92d | 2023-09-01 A | 2024-01-18 |  | 50% | 46.28d | 2023-09-01 | 2024-01-11 | 87d | 0d |  |  | 电脑 [400%]; 云服务器 [199.6%]; 雷璟锟; 陈罗星; 孙潇桐; 叶嘉宁; 俞家宝 | 3318.53h | 1717.91h | 410,888.54 | 543,660 | 229,809.59 |
| 2 | N-1-1 | **启动与计划** |  | 6d | 2023-09-01 A | 2023-09-08 A |  | 100% |  | 2023-09-01 | 2023-09-08 | 6d |  |  |  |  | 3.85h | 3.85h | 385 |  | 385 |
| 3 | N-1-1-1 | 准备项目章程 |  | 2d | 2023-09-01 A | 2023-09-04 A |  | 100% |  | 2023-09-01 | 2023-09-04 | 2d |  |  |  | 孙潇桐 [10%] | 1.4h | 1.4h | 140 |  | 140 |
| 4 | N-1-1-2 | 召开项目启动会 |  | 1d | 2023-09-05 A | 2023-09-05 A | 3 | 100% |  | 2023-09-05 | 2023-09-05 | 1d |  |  |  | 孙潇桐 [5%] | 0.35h | 0.35h | 35 |  | 35 |
| 5 | N-1-1-3 | 准备项目计划 | milestone | 3d | 2023-09-06 A | 2023-09-08 A | 4 | 100% |  | 2023-09-06 | 2023-09-08 | 3d |  |  |  | 孙潇桐 [10%] | 2.1h | 2.1h | 210 |  | 210 |
| 6 | N-1-2 | **分析建模** |  | 16.29d | 2023-09-18 A | 2023-10-17 |  | 42% | 9.46d | 2023-09-11 | 2023-09-25 | 11d | 64.71d |  |  |  | 7.1h | 5.04h | 507.5 |  | 363.3 |
| 7 | N-1-2-1 | **需求分析** |  | 5d | 2023-09-18 A | 2023-09-22 |  | 42% | 2.9d | 2023-09-11 | 2023-09-15 | 5d |  |  |  |  | 7.1h | 5.04h | 507.5 |  | 363.3 |
| 8 | N-1-2-1-1 | 功能需求 |  | 2d | 2023-09-18 A | 2023-09-19 A | 5 | 100% |  | 2023-09-11 | 2023-09-12 | 2d |  |  |  | 陈罗星 [10%] | 1.4h | 1.4h | 98 |  | 98 |
| 9 | N-1-2-1-2 | 数据需求 |  | 14.29d | 2023-09-20 A | 2023-10-17 | 8 | 7% | 13.29d | 2023-09-13 | 2023-09-13 | 1d | 64.71d |  |  | 雷璟锟 [2%] | 2h | 0.14h | 140 |  | 9.8 |
| 10 | N-1-2-1-3 | 性能需求 |  | 1d | 2023-09-21 A | 2023-09-21 A | 9 | 100% |  | 2023-09-14 | 2023-09-14 | 1d |  |  |  | 陈罗星 [10%] | 0.7h | 0.7h | 49 |  | 49 |
| 11 | N-1-2-1-4 | 需求分析评审 | milestone | 1d | 2023-09-22 A | 2023-09-22 A | 10 | 100% |  | 2023-09-15 | 2023-09-15 | 1d |  |  |  | 孙潇桐 [5%] | 0.35h | 0.35h | 35 |  | 35 |
| 12 | N-1-2-2 | **建模** |  | 6.57d | 2023-09-25 A | 2023-10-10 |  | 90% | 0.67d | 2023-09-18 | 2023-09-25 | 6d | 4.71d |  |  |  | 2.65h | 2.45h | 185.5 |  | 171.5 |
| 13 | N-1-2-2-1 | 活动图建模 |  | 2d | 2023-09-25 A | 2023-09-26 A | 11 | 100% |  | 2023-09-18 | 2023-09-19 | 2d |  |  |  | 施宇杰 [10%] | 1.4h | 1.4h | 98 |  | 98 |
| 14 | N-1-2-2-2 | 类图建模 |  | 1d | 2023-09-27 A | 2023-09-27 A | 13 | 100% |  | 2023-09-20 | 2023-09-20 | 1d |  |  |  | 施宇杰 [5%] | 0.35h | 0.35h | 24.5 |  | 24.5 |
| 15 | N-1-2-2-3 | 用例图建模 |  | 1d | 2023-09-29 A | 2023-09-29 A | 14, 8FS+7d | 100% |  | 2023-09-22 | 2023-09-22 | 1d |  |  | start no earlier than 2023-09-21 | 施宇杰 [5%] | 0.35h | 0.35h | 24.5 |  | 24.5 |
| 16 | N-1-2-2-4 | 构件图建模 |  | 1.57d | 2023-10-09 A | 2023-10-10 | 15 | 64% | 0.57d | 2023-09-25 | 2023-09-25 | 1d | 4.71d | 0d |  | 施宇杰 [5%] | 0.55h | 0.35h | 38.5 |  | 24.5 |
| 17 | N-1-3 | **设计** |  | 66d | 2023-10-10 A | 2024-01-12 |  | 24% | 50.3d | 2023-09-26 | 2023-12-28 | 63d | 4d |  |  |  | 55.05h | 42.87h | 3,853.5 |  | 3,000.9 |
| 18 | N-1-3-1 | **概要设计** |  | 66d | 2023-10-10 A | 2024-01-12 |  | 4% | 63.28d | 2023-09-26 | 2023-10-09 | 5d | 4d |  |  |  | 14h | 1.82h | 980 |  | 127.4 |
| 19 | N-1-3-1-1 | 系统总体结构设计 |  | 8.57d | 2023-10-10 A | 2023-10-25 | 16 | 23% | 6.57d | 2023-09-26 | 2023-09-27 | 2d | 0d |  |  | 雷璟锟 [10%] | 6h | 1.4h | 420 |  | 98 |
| 20 | N-1-3-1-2 | 系统模块化设计 |  | 50.71d | 2023-10-12 A | 2023-12-21 | 19 | 4% | 48.71d | 2023-09-28 | 2023-09-29 | 2d | 0d |  |  | 雷璟锟 [2%] | 6h | 0.28h | 420 |  | 19.6 |
| 21 | N-1-3-1-3 | 编写概要设计文档 | milestone | 62d | 2023-10-16 A | 2024-01-12 | 20 | 2% | 61d | 2023-10-09 | 2023-10-09 | 1d | 4d |  |  | 雷璟锟 [2%] | 2h | 0.14h | 140 |  | 9.8 |
| 22 | N-1-3-2 | **详细设计** |  | 58d | 2023-10-17 A | 2024-01-09 A |  | 100% |  | 2023-10-10 | 2023-12-28 | 58d |  |  |  |  | 41.05h | 41.05h | 2,873.5 |  | 2,873.5 |
| 23 | N-1-3-2-1 | 用户界面设计 |  | 3d | 2023-10-17 A | 2023-10-19 A | 18 | 100% |  | 2023-10-10 | 2023-10-12 | 3d |  |  |  | 施宇杰 [10%] | 2.1h | 2.1h | 147 |  | 147 |
| 24 | N-1-3-2-2 | 数据库结构设计 | milestone | 4d | 2023-10-20 A | 2023-10-25 A | 23 | 100% |  | 2023-10-13 | 2023-10-18 | 4d |  |  |  | 施宇杰 [5%] | 1.4h | 1.4h | 98 |  | 98 |
| 25 | N-1-3-2-3 | 具体模块算法设计 | milestone | 19.29d | 2023-10-26 A | 2023-11-22 A | 24 | 100% |  | 2023-10-19 | 2023-11-20 | 23d |  |  |  | 雷璟锟 [20%]; 施宇杰 [20%] | 33h | 33h | 2,310 |  | 2,310 |
| 26 | N-1-3-2-4 | 接口设计 |  | 4d | 2023-12-29 A | 2024-01-08 A | 28FF, 25 | 100% |  | 2023-12-22 | 2023-12-27 | 4d |  |  |  | 雷璟锟 [15%] | 4.2h | 4.2h | 294 |  | 294 |
| 27 | N-1-3-2-5 | 编写详细设计文档 | milestone | 1d | 2024-01-09 A | 2024-01-09 A | 26 | 100% |  | 2023-12-28 | 2023-12-28 | 1d |  |  |  | 施宇杰 [5%] | 0.35h | 0.35h | 24.5 |  | 24.5 |

| ID | WBS | Task | Type | Duration | Start | Finish | Predecessors | Complete | Remaining | Baseline start | Baseline finish | Baseline duration | Total slack | Constraint | Resources | Work | Actual work | Cost | Baseline cost | Actual cost |
| --- | --- | --- | --- | --- | --- | --- | --- | --- | --- | --- | --- | --- | --- | --- | --- | --- | --- | --- | --- | --- |
| 28 | N-1-4 | **编码** |  | 34.14d | 2023-11-28 A | 2024-01-18 |  | 80% | 6.94d | 2023-11-21 | 2023-12-27 | 27d | 0.86d |  |  | 21.4h | 20.3h | 1,498 |  | 1,421 |
| 29 | N-1-4-1 | **分模块实现** |  | 25d | 2023-11-28 A | 2024-01-04 A |  | 100% |  | 2023-11-21 | 2023-12-25 | 25d |  |  |  | 19.6h | 19.6h | 1,372 |  | 1,372 |
| 30 | N-1-4-1-1 | **用户模块** |  | 11d | 2023-11-28 A | 2023-12-12 A |  | 100% |  | 2023-11-21 | 2023-12-05 | 11d |  |  |  | 9.8h | 9.8h | 686 |  | 686 |
| 31 | N-1-4-1-1-1 | 登录注册模块 |  | 4d | 2023-11-28 A | 2023-12-03 A | 25 | 100% |  | 2023-11-21 | 2023-11-23 | 3d |  |  | 施宇杰 [10%] | 2.8h | 2.8h | 196 |  | 196 |
| 32 | N-1-4-1-1-2 | 浏览与搜索模块 |  | 4d | 2023-12-01 A | 2023-12-06 A | 31 | 100% |  | 2023-11-24 | 2023-11-29 | 4d |  |  | 施宇杰 [15%] | 4.2h | 4.2h | 294 |  | 294 |
| 33 | N-1-4-1-1-3 | 购买模块 | milestone | 4d | 2023-12-07 A | 2023-12-12 A | 32 | 100% |  | 2023-11-30 | 2023-12-05 | 4d |  |  | 施宇杰 [10%] | 2.8h | 2.8h | 196 |  | 196 |
| 34 | N-1-4-1-2 | **管理员模块** |  | 14d | 2023-12-13 A | 2024-01-04 A |  | 100% |  | 2023-12-06 | 2023-12-25 | 14d |  |  |  | 9.8h | 9.8h | 686 |  | 686 |
| 35 | N-1-4-1-2-1 | 订单管理模块 |  | 3d | 2023-12-13 A | 2023-12-15 A | 33 | 100% |  | 2023-12-06 | 2023-12-08 | 3d |  |  | 施宇杰 [10%] | 2.1h | 2.1h | 147 |  | 147 |
| 36 | N-1-4-1-2-2 | 商品管理模块 |  | 3d | 2023-12-18 A | 2023-12-20 A | 35 | 100% |  | 2023-12-11 | 2023-12-13 | 3d |  |  | 施宇杰 [10%] | 2.1h | 2.1h | 147 |  | 147 |
| 37 | N-1-4-1-2-3 | 公告管理模块 |  | 2d | 2023-12-21 A | 2023-12-22 A | 36 | 100% |  | 2023-12-14 | 2023-12-15 | 2d |  |  | 施宇杰 [10%] | 1.4h | 1.4h | 98 |  | 98 |
| 38 | N-1-4-1-2-4 | 会员管理模块 |  | 3d | 2023-12-25 A | 2023-12-27 A | 37 | 100% |  | 2023-12-18 | 2023-12-20 | 3d |  |  | 施宇杰 [10%] | 2.1h | 2.1h | 147 |  | 147 |
| 39 | N-1-4-1-2-5 | 用户管理模块 |  | 3d | 2023-12-28 A | 2024-01-04 A | 38 | 100% |  | 2023-12-21 | 2023-12-25 | 3d |  |  | 施宇杰 [10%] | 2.1h | 2.1h | 147 |  | 147 |
| 40 | N-1-4-2 | 模块组合 | milestone | 9.14d | 2024-01-05 A | 2024-01-18 | 39 | 22% | 7.14d | 2023-12-26 | 2023-12-27 | 2d | 0.86d | start no earlier than 2023-12-26 | 雷璟锟 [5%] | 1.8h | 0.7h | 126 |  | 49 |
| 41 | N-1-5 | **测试** |  | 42d | 2023-10-26 A | 2023-12-22 A |  | 100% |  | 2023-10-19 | 2023-12-15 | 42d |  |  |  | 11.2h | 11.2h | 857.5 | 5,400 | 857.5 |
| 42 | N-1-5-1 | 编制测试用例 |  | 4d | 2023-10-26 A | 2023-10-31 A | 25SS | 100% |  | 2023-10-19 | 2023-10-24 | 4d |  |  | 俞家宝 [10%] | 2.8h | 2.8h | 196 |  | 196 |
| 43 | N-1-5-2 | 制定单元测试计划 |  | 1d | 2023-11-01 A | 2023-11-01 A | 42 | 100% |  | 2023-10-25 | 2023-10-25 | 1d |  |  | 俞家宝 [5%] | 0.35h | 0.35h | 24.5 |  | 24.5 |
| 44 | N-1-5-3 | 制定集成测试计划 |  | 1d | 2023-11-02 A | 2023-11-02 A | 43 | 100% |  | 2023-10-26 | 2023-10-26 | 1d |  |  | 俞家宝 [5%] | 0.35h | 0.35h | 24.5 |  | 24.5 |
| 45 | N-1-5-4 | 制定系统测试计划 |  | 1d | 2023-11-03 A | 2023-11-03 A | 44 | 100% |  | 2023-10-27 | 2023-10-27 | 1d |  |  | 俞家宝 [5%] | 0.35h | 0.35h | 24.5 |  | 24.5 |
| 46 | N-1-5-5 | 制定验收测试计划 | milestone | 1d | 2023-11-06 A | 2023-11-06 A | 45 | 100% |  | 2023-10-30 | 2023-10-30 | 1d |  |  | 孙潇桐 [5%]; 俞家宝 [5%] | 0.7h | 0.7h | 59.5 |  | 59.5 |
| 47 | N-1-5-6 | **进行单元测试** |  | 12d | 2023-11-09 A | 2023-11-24 A | 43FS+5d | 100% |  | 2023-11-02 | 2023-11-17 | 12d |  |  |  | 1.4h | 1.4h | 98 |  | 98 |
| 48 | N-1-5-6-1 | 测试登录注册模块 |  | 2d | 2023-11-09 A | 2023-11-10 A |  | 100% |  | 2023-11-02 | 2023-11-03 | 2d |  |  | 俞家宝 [1%] | 0.14h | 0.14h | 9.8 |  | 9.8 |
| 49 | N-1-5-6-2 | 测试浏览搜索模块 |  | 2d | 2023-11-13 A | 2023-11-14 A | 48 | 100% |  | 2023-11-06 | 2023-11-07 | 2d |  |  | 俞家宝 [1%] | 0.14h | 0.14h | 9.8 |  | 9.8 |
| 50 | N-1-5-6-3 | 测试购买模块 |  | 2d | 2023-11-15 A | 2023-11-16 A | 49 | 100% |  | 2023-11-08 | 2023-11-09 | 2d |  |  | 俞家宝 [2%] | 0.28h | 0.28h | 19.6 |  | 19.6 |
| 51 | N-1-5-6-4 | 测试订单管理模块 |  | 2d | 2023-11-17 A | 2023-11-20 A | 50 | 100% |  | 2023-11-10 | 2023-11-13 | 2d |  |  | 俞家宝 [1%] | 0.14h | 0.14h | 9.8 |  | 9.8 |
| 52 | N-1-5-6-5 | 测试商品管理模块 |  | 1d | 2023-11-21 A | 2023-11-21 A | 51 | 100% |  | 2023-11-14 | 2023-11-14 | 1d |  |  | 俞家宝 [2%] | 0.14h | 0.14h | 9.8 |  | 9.8 |
| 53 | N-1-5-6-6 | 测试公告管理模块 |  | 1d | 2023-11-22 A | 2023-11-22 A | 52 | 100% |  | 2023-11-15 | 2023-11-15 | 1d |  |  | 俞家宝 [2%] | 0.14h | 0.14h | 9.8 |  | 9.8 |
| 54 | N-1-5-6-7 | 测试会员管理模块 |  | 2d | 2023-11-23 A | 2023-11-24 A | 53 | 100% |  | 2023-11-16 | 2023-11-16 | 1d |  |  | 俞家宝 [2%] | 0.28h | 0.28h | 19.6 |  | 19.6 |
| 55 | N-1-5-6-8 | 测试用户管理模块 | milestone | 1d | 2023-11-24 A | 2023-11-24 A | 54 | 100% |  | 2023-11-17 | 2023-11-17 | 1d |  |  | 俞家宝 [2%] | 0.14h | 0.14h | 9.8 |  | 9.8 |
| 56 | N-1-5-7 | 进行集成测试 |  | 2d | 2023-12-11 A | 2023-12-12 A | 44FS+26d, 47 | 100% |  | 2023-12-04 | 2023-12-05 | 2d |  |  | 俞家宝 [1%] | 0.14h | 0.14h | 9.8 |  | 9.8 |
| 57 | N-1-5-8 | 进行系统测试 |  | 4d | 2023-12-13 A | 2023-12-18 A | 56, 45FS+26d | 100% |  | 2023-12-06 | 2023-12-11 | 4d |  |  | 俞家宝 [2%] | 0.56h | 0.56h | 39.2 |  | 39.2 |
| 58 | N-1-5-9 | 进行验收测试 |  | 3d | 2023-12-19 A | 2023-12-21 A | 57, 46FS+26d | 100% |  | 2023-12-12 | 2023-12-14 | 3d |  |  | 俞家宝 [10%]; 孙潇桐 [10%] | 4.2h | 4.2h | 357 |  | 357 |
| 59 | N-1-5-10 | 编写测试报告 | milestone | 1d | 2023-12-22 A | 2023-12-22 A | 58 | 100% |  | 2023-12-15 | 2023-12-15 | 1d |  |  | 俞家宝 [5%] | 0.35h | 0.35h | 24.5 |  | 24.5 |

| ID | WBS | Task | Type | Duration | Start | Finish | Predecessors | Complete | Remaining | Actual finish | Baseline start | Baseline finish | Baseline duration | Total slack | Constraint | Resources | Work | Actual work | Cost | Baseline cost | Actual cost |
| --- | --- | --- | --- | --- | --- | --- | --- | --- | --- | --- | --- | --- | --- | --- | --- | --- | --- | --- | --- | --- | --- |
| 60 | N-1-6 | **交付与收尾** |  | 16d | 2023-12-25 A | 2024-01-18 |  | 96% | 0.64d |  | 2023-12-18 | 2024-01-11 | 16d | 0d |  |  | 66.15h | 65.45h | 5,386.5 |  | 5,316.5 |
| 61 | N-1-6-1 | 进行系统试运行 |  | 6d | 2023-12-25 A | 2024-01-04 A | 59 | 100% |  |  | 2023-12-18 | 2023-12-25 | 6d |  |  | 雷璟锟 [10%]; 施宇杰 [10%]; 孙潇桐 [20%] | 16.8h | 16.8h | 1,428 |  | 1,428 |
| 62 | N-1-6-2 | 编写试运行报告 |  | 1d | 2024-01-05 A | 2024-01-05 A | 61 | 100% |  |  | 2023-12-26 | 2023-12-26 | 1d |  |  | 施宇杰 [5%] | 0.35h | 0.35h | 24.5 |  | 24.5 |
| 63 | N-1-6-3 | 进行培训 |  | 6.67d | 2024-01-08 A | 2024-01-16 | 62 | 90% | 0.67d |  | 2023-12-27 | 2024-01-08 | 6d | 2.33d |  | 陈罗星 [15%]; 雷璟锟 [15%]; 施宇杰 [15%]; 孙潇桐 [15%]; 叶嘉宁 [15%]; 俞家宝 [15%] | 38.5h | 37.8h | 3,094 | 8,650 | 3,024 |
| 64 | N-1-6-4 | 交付最终成果 |  | 2d | 2024-01-16 A | 2024-01-17 A | 63 | 100% |  |  | 2024-01-09 | 2024-01-10 | 2d |  |  | 陈罗星 [10%]; 雷璟锟 [10%]; 施宇杰 [10%]; 孙潇桐 [10%]; 叶嘉宁 [10%]; 俞家宝 [10%] | 8.4h | 8.4h | 672 | 5,000 | 672 |
| 65 | N-1-6-5 | 总结经验教训 | milestone | 1d | 2024-01-18 A | 2024-01-18 A | 64 | 100% |  |  | 2024-01-11 | 2024-01-11 | 1d |  |  | 陈罗星 [5%]; 雷璟锟 [5%]; 施宇杰 [5%]; 孙潇桐 [5%]; 叶嘉宁 [5%]; 俞家宝 [5%] | 2.1h | 2.1h | 168 |  | 168 |
| 66 | N-1-7 | **进度协调会议** |  | 41d | 2023-11-13 A | 2024-01-11 |  | 100% |  | 2024-01-08 | 2023-11-13 | 2024-01-11 | 41d |  |  |  | 3.78h | 3.78h | 302.4 |  | 302.4 |
| 67 | N-1-7-1 | 进度协调会议 1 |  | 7h | 2023-11-13 A | 2023-11-13 A |  | 100% |  |  | 2023-11-13 | 2023-11-13 | 1h |  | start no earlier than 2023-11-13 | 陈罗星 [1%]; 雷璟锟 [1%]; 施宇杰 [1%]; 孙潇桐 [1%]; 叶嘉宁 [1%]; 俞家宝 [1%] | 0.42h | 0.42h | 33.6 |  | 33.6 |
| 68 | N-1-7-2 | 进度协调会议 2 |  | 7h | 2023-11-20 A | 2023-11-20 A |  | 100% |  |  | 2023-11-20 | 2023-11-20 | 1h |  | start no earlier than 2023-11-20 | 陈罗星 [1%]; 雷璟锟 [1%]; 施宇杰 [1%]; 孙潇桐 [1%]; 叶嘉宁 [1%]; 俞家宝 [1%] | 0.42h | 0.42h | 33.6 |  | 33.6 |
| 69 | N-1-7-3 | 进度协调会议 3 |  | 7h | 2023-11-27 A | 2023-11-27 A |  | 100% |  |  | 2023-11-27 | 2023-11-27 | 1h |  | start no earlier than 2023-11-27 | 陈罗星 [1%]; 雷璟锟 [1%]; 施宇杰 [1%]; 孙潇桐 [1%]; 叶嘉宁 [1%]; 俞家宝 [1%] | 0.42h | 0.42h | 33.6 |  | 33.6 |
| 70 | N-1-7-4 | 进度协调会议 4 |  | 7h | 2023-12-04 A | 2023-12-04 A |  | 100% |  |  | 2023-12-04 | 2023-12-04 | 1h |  | start no earlier than 2023-12-04 | 陈罗星 [1%]; 雷璟锟 [1%]; 施宇杰 [1%]; 孙潇桐 [1%]; 叶嘉宁 [1%]; 俞家宝 [1%] | 0.42h | 0.42h | 33.6 |  | 33.6 |
| 71 | N-1-7-5 | 进度协调会议 5 |  | 7h | 2023-12-11 A | 2023-12-11 A |  | 100% |  |  | 2023-12-11 | 2023-12-11 | 1h |  | start no earlier than 2023-12-11 | 陈罗星 [1%]; 雷璟锟 [1%]; 施宇杰 [1%]; 孙潇桐 [1%]; 叶嘉宁 [1%]; 俞家宝 [1%] | 0.42h | 0.42h | 33.6 |  | 33.6 |
| 72 | N-1-7-6 | 进度协调会议 6 |  | 7h | 2023-12-18 A | 2023-12-18 A |  | 100% |  |  | 2023-12-18 | 2023-12-18 | 1h |  | start no earlier than 2023-12-18 | 陈罗星 [1%]; 雷璟锟 [1%]; 施宇杰 [1%]; 孙潇桐 [1%]; 叶嘉宁 [1%]; 俞家宝 [1%] | 0.42h | 0.42h | 33.6 |  | 33.6 |
| 73 | N-1-7-7 | 进度协调会议 7 |  | 7h | 2023-12-25 A | 2023-12-25 A |  | 100% |  |  | 2023-12-25 | 2023-12-25 | 1h |  | start no earlier than 2023-12-25 | 陈罗星 [1%]; 雷璟锟 [1%]; 施宇杰 [1%]; 孙潇桐 [1%]; 叶嘉宁 [1%]; 俞家宝 [1%] | 0.42h | 0.42h | 33.6 |  | 33.6 |
| 74 | N-1-7-8 | 进度协调会议 8 |  | 7h | 2024-01-04 A | 2024-01-04 A |  | 100% |  |  | 2024-01-04 | 2024-01-04 | 1h |  | start no earlier than 2024-01-01 | 陈罗星 [1%]; 雷璟锟 [1%]; 施宇杰 [1%]; 孙潇桐 [1%]; 叶嘉宁 [1%]; 俞家宝 [1%] | 0.42h | 0.42h | 33.6 |  | 33.6 |
| 75 | N-1-7-9 | 进度协调会议 9 |  | 7h | 2024-01-08 A | 2024-01-08 A |  | 100% |  |  | 2024-01-08 | 2024-01-08 | 1h |  | start no earlier than 2024-01-08 | 陈罗星 [1%]; 雷璟锟 [1%]; 施宇杰 [1%]; 孙潇桐 [1%]; 叶嘉宁 [1%]; 俞家宝 [1%] | 0.42h | 0.42h | 33.6 |  | 33.6 |
